Schedule from MS Project, 2024-02-26 to 2025-06-13.

## Calendars

- Standard: Mon-Fri 08:00-12:00, 13:00-17:00; Sat-Sun off.

## Schedule

| ID | WBS | Task | Type | Duration | Start | Finish | Predecessors |
| --- | --- | --- | --- | --- | --- | --- | --- |
| 1 | 1 | **Management** |  | 340d? | 2024-02-26 | 2025-06-13 |  |
| 2 | 1.1 | Development of Board Submission | manual | 26d | 2024-02-26 | 2024-04-01 |  |
| 3 | 1.2 | Deliver the Submission to the Board | milestone, manual | 0d | 2024-04-02 | 2024-04-02 |  |
| 4 | 1.3 | Board Review & Decision | manual | 20d | 2024-04-01 | 2024-04-26 |  |
| 5 | 1.4 | Official Project Start Date | milestone, manual | 0d | 2024-04-29 | 2024-04-29 |  |
| 6 | 1.5 | **Tender Process Initiation** |  | 86d? | 2024-02-26 | 2024-06-24 |  |
| 7 | 1.5.1 | Develop Tender Documentation | manual | 30d | 2024-02-26 | 2024-04-05 |  |
| 8 | 1.5.2 | Release Tender to Companies | milestone, manual | 0d | 2024-04-05 | 2024-04-05 |  |
| 9 | 1.5.3 | Companies develop Proposals | manual | 20d | 2024-04-08 | 2024-05-03 |  |
| 10 | 1.5.4 | Tender Submission Evaluation | manual | 20d | 2024-05-06 | 2024-05-31 |  |
| 11 | 1.5.5 | Negotiate Contracts | manual | 10d | 2024-06-03 | 2024-06-14 |  |
| 12 | 1.5.6 | Finalize Contract Signatures | milestone, manual | 0d | 2024-06-24 | 2024-06-24 |  |
| 13 | 1.6 | **Legal Documentation** |  | 80d | 2024-02-26 | 2024-06-14 |  |
| 14 | 1.6.1 | Develop Terms & Conditions | manual | 30d | 2024-02-26 | 2024-04-05 |  |
| 15 | 1.6.2 | Review variations to Ts&Cs | manual | 20d | 2024-05-06 | 2024-05-31 |  |
| 16 | 1.6.3 | Contract Finalization Discussions | manual | 10d | 2024-06-03 | 2024-06-14 |  |
| 17 | 1.7 | Project Administration | manual | 86d | 2024-02-26 | 2024-06-24 |  |
| 18 | 1.8 | Knowledge Management | manual | 86d | 2024-02-26 | 2024-06-24 |  |
| 19 | 1.9 | Documentation | manual | 86d | 2024-02-26 | 2024-06-24 |  |
| 20 | 1.10 | Financial Tracking | manual | 86d | 2024-02-26 | 2024-06-24 |  |
| 21 | 1.11 | Meetings | manual | 86d | 2024-02-26 | 2024-06-24 |  |
| 22 | 1.12 | Reports | manual | 86d | 2024-02-26 | 2024-06-24 |  |
| 23 | 1.13 | Other WS's Management | manual | 253d | 2024-06-26 | 2025-06-13 |  |
| 24 | 2 | **Client Software** |  | 235d? | 2024-02-26 | 2025-01-17 |  |
| 25 | 2.1 | Initial Design Phase | manual | 86d | 2024-02-26 | 2024-06-24 | 13SS |
| 26 | 2.2 | System & Software Design | manual | 50d | 2024-06-24 | 2024-08-30 | 12SS |

| ID | WBS | Task | Type | Duration | Start | Finish | Predecessors |
| --- | --- | --- | --- | --- | --- | --- | --- |
| 27 | 2.3 | **Test Hardware Procurement** |  | 50d | 2024-06-24 | 2024-08-30 | 12SS |
| 28 | 2.3.1 | Environments Identification | manual | 10d | 2024-06-24 | 2024-07-05 |  |
| 29 | 2.3.2 | Procurement of Hardware | manual | 30d | 2024-07-08 | 2024-08-16 |  |
| 30 | 2.3.3 | Unit Testing of Hardware | manual | 25d | 2024-07-15 | 2024-08-16 |  |
| 31 | 2.3.4 | Finalise Technical Design | milestone, manual | 0d | 2024-08-30 | 2024-08-30 |  |
| 32 | 2.4 | Client Software Development & Prototyping (Agile) | manual | 51d | 2024-08-30 | 2024-11-08 |  |
| 33 | 2.5 | **Testing** |  | 86d? | 2024-09-20 | 2025-01-17 |  |
| 34 | 2.5.1 | Integration Testing | manual | 30d | 2024-09-20 | 2024-10-31 |  |
| 35 | 2.5.2 | Client/Web Server System Test | manual | 15d | 2024-10-14 | 2024-11-01 |  |
| 36 | 2.5.3 | Complete Integration-Sys Test | milestone, manual | 0d | 2024-11-11 | 2024-11-11 |  |
| 37 | 2.5.4 | Full System Testing | manual | 10d | 2024-11-11 | 2024-11-22 |  |
| 38 | 2.5.5 | Acceptance Testing | manual | 30d | 2024-12-09 | 2025-01-17 |  |
| 39 | 2.5.6 | Complete Final Acceptance Testing | milestone, manual | 0d | 2025-01-17 | 2025-01-17 |  |
| 40 | 3 | **Pilot 1 (Perth)** |  | 235d? | 2024-02-26 | 2025-01-17 |  |
| 41 | 3.1 | Initial Design Phase for Perth Pilot | manual | 85d | 2024-02-26 | 2024-06-21 | 25SS |
| 42 | 3.2 | **Web Server** |  | 95d? | 2024-06-24 | 2024-11-01 | 27SS |
| 43 | 3.2.1 | **Hardware** |  | 40d? | 2024-06-24 | 2024-08-16 | 27SS |
| 44 | 3.2.1.1 | Web Server Hardware Design | manual | 15d | 2024-06-24 | 2024-07-12 | 27SS |
| 45 | 3.2.1.2 | Hardware Procurement | manual | 20d | 2024-07-15 | 2024-08-09 |  |
| 46 | 3.2.1.3 | Hardware Unit Testing | manual | 20d | 2024-07-22 | 2024-08-16 |  |
| 47 | 3.2.2 | **Software** |  | 95d | 2024-06-24 | 2024-11-01 | 44SS |
| 48 | 3.2.2.1 | Software Design Phase | manual | 15d | 2024-06-24 | 2024-07-12 | 44SS |
| 49 | 3.2.2.2 | Design & Prototype Phase | manual | 35d | 2024-07-15 | 2024-08-30 |  |
| 50 | 3.2.2.3 | Final Technical Design | milestone, manual | 0d | 2024-08-30 | 2024-08-30 |  |
| 51 | 3.2.2.4 | Development (Agile) | manual | 45d | 2024-09-02 | 2024-11-01 |  |
| 52 | 3.2.2.5 | Integration Testing | manual | 70d | 2024-07-29 | 2024-11-01 |  |
| 53 | 3.2.2.6 | Integration Testing for Client/Server | manual | 15d | 2024-10-14 | 2024-11-01 |  |

| ID | WBS | Task | Type | Duration | Start | Finish | Predecessors |
| --- | --- | --- | --- | --- | --- | --- | --- |
| 54 | 3.3 | **Client Database** |  | 100d | 2024-06-24 | 2024-11-08 | 48SS |
| 55 | 3.3.1 | **Hardware** |  | 50d | 2024-06-24 | 2024-08-30 | 48SS |
| 56 | 3.3.1.1 | Hardware Design Phase | manual | 15d | 2024-06-24 | 2024-07-12 | 48SS |
| 57 | 3.3.1.2 | Procurement | manual | 30d | 2024-07-15 | 2024-08-23 |  |
| 58 | 3.3.1.3 | Hardware Unit Testing | manual | 20d | 2024-08-05 | 2024-08-30 |  |
| 59 | 3.3.2 | **Software** |  | 100d | 2024-06-24 | 2024-11-08 | 56SS |
| 60 | 3.3.2.1 | Software Design Phase | manual | 15d | 2024-06-24 | 2024-07-12 | 56SS |
| 61 | 3.3.2.2 | Environment Procurement (Licenses) | manual | 11d | 2024-07-15 | 2024-07-27 |  |
| 62 | 3.3.2.3 | Design & Prototype | manual | 35d | 2024-07-15 | 2024-08-30 |  |
| 63 | 3.3.2.4 | Finalise Technical Design | milestone, manual | 0d | 2024-08-30 | 2024-08-30 |  |
| 64 | 3.3.2.5 | Development (Agile) | manual | 45d | 2024-09-02 | 2024-11-01 |  |
| 65 | 3.3.2.6 | Integration Testing | manual | 70d | 2024-08-05 | 2024-11-08 |  |
| 66 | 3.3.2.7 | Client/Server Integration Testing | manual | 15d | 2024-10-14 | 2024-11-01 |  |
| 67 | 3.4 | **OCA/Video Server** |  | 100d? | 2024-06-24 | 2024-11-08 | 60SS |
| 68 | 3.4.1 | **Hardware** |  | 45d? | 2024-06-24 | 2024-08-23 | 60SS |
| 69 | 3.4.1.1 | Hardware Design Phase | manual | 15d | 2024-06-24 | 2024-07-12 | 60SS |
| 70 | 3.4.1.2 | Procurement | manual | 30d | 2024-07-15 | 2024-08-23 |  |
| 71 | 3.4.1.3 | Hardware Unit Testing | manual | 20d | 2024-07-29 | 2024-08-23 |  |
| 72 | 3.4.2 | **Software** |  | 100d | 2024-06-24 | 2024-11-08 | 69SS |
| 73 | 3.4.2.1 | Software Design Phase | manual | 15d | 2024-06-24 | 2024-07-12 | 69SS |
| 74 | 3.4.2.2 | Design & Prototype | manual | 35d | 2024-07-15 | 2024-08-30 |  |
| 75 | 3.4.2.3 | Finalise Technical Design | milestone, manual | 0d | 2024-08-30 | 2024-08-30 |  |
| 76 | 3.4.2.4 | Development (Agile) | manual | 45d | 2024-09-02 | 2024-11-01 |  |
| 77 | 3.4.2.5 | Integration Testing | manual | 70d | 2024-08-05 | 2024-11-08 |  |
| 78 | 3.4.2.6 | Client/Server Integration Testing | manual | 15d | 2024-10-14 | 2024-11-01 |  |

| ID | WBS | Task | Type | Duration | Start | Finish | Predecessors |
| --- | --- | --- | --- | --- | --- | --- | --- |
| 79 | 3.5 | **Games Server** |  | 100d? | 2024-06-24 | 2024-11-08 | 73SS |
| 80 | 3.5.1 | **Hardware** |  | 45d | 2024-06-24 | 2024-08-23 | 73SS |
| 81 | 3.5.1.1 | Hardware Design Phase | manual | 15d | 2024-06-24 | 2024-07-12 | 73SS |
| 82 | 3.5.1.2 | Procurement | manual | 30d | 2024-07-15 | 2024-08-23 |  |
| 83 | 3.5.1.3 | Hardware Unit Testing | manual | 20d | 2024-07-29 | 2024-08-23 |  |
| 84 | 3.5.2 | **Software** |  | 100d? | 2024-06-24 | 2024-11-08 | 81SS |
| 85 | 3.5.2.1 | Software Design Phase | manual | 15d | 2024-06-24 | 2024-07-12 | 81SS |
| 86 | 3.5.2.2 | Design & Prototype | manual | 35d | 2024-07-15 | 2024-08-30 |  |
| 87 | 3.5.2.3 | Finalise Technical Design | milestone, manual | 0d | 2024-08-30 | 2024-08-30 |  |
| 88 | 3.5.2.4 | Agile Software Development | manual | 45d | 2024-09-02 | 2024-11-01 |  |
| 89 | 3.5.2.5 | Integration Testing | manual | 70d | 2024-08-05 | 2024-11-08 |  |
| 90 | 3.5.2.6 | Client/Server Integration Testing | manual | 15d | 2024-10-14 | 2024-11-01 |  |
| 91 | 3.6 | **System Health Management** |  | 100d | 2024-06-24 | 2024-11-08 | 85SS |
| 92 | 3.6.1 | **Hardware** |  | 45d | 2024-06-24 | 2024-08-23 | 85SS |
| 93 | 3.6.1.1 | Hardware Design Phase | manual | 15d | 2024-06-24 | 2024-07-12 | 85SS |
| 94 | 3.6.1.2 | Procurement | manual | 30d | 2024-07-15 | 2024-08-23 |  |
| 95 | 3.6.1.3 | Hardware Unit Testing | manual | 20d | 2024-07-29 | 2024-08-23 |  |
| 96 | 3.6.2 | **Software** |  | 100d | 2024-06-24 | 2024-11-08 | 92SS |
| 97 | 3.6.2.1 | Software Design Phase | manual | 15d | 2024-06-24 | 2024-07-12 | 92SS |
| 98 | 3.6.2.2 | Design & Prototype | manual | 35d | 2024-07-15 | 2024-08-30 |  |
| 99 | 3.6.2.3 | Finalise Technical Design | milestone, manual | 0d | 2024-08-30 | 2024-08-30 |  |
| 100 | 3.6.2.4 | Development (Agile) | manual | 45d | 2024-09-02 | 2024-11-01 |  |
| 101 | 3.6.2.5 | Integration Testing | manual | 70d | 2024-08-05 | 2024-11-08 |  |
| 102 | 3.7 | Complete Integration Testing | milestone, manual | 0d | 2024-11-11 | 2024-11-11 |  |
| 103 | 3.8 | System Testing | manual | 10d | 2024-11-22 | 2024-12-05 | 145SS |
| 104 | 3.9 | Rectification | manual | 13d | 2024-11-18 | 2024-12-04 |  |
| 105 | 3.10 | Beta 1 (Perth) Set to Work | manual | 8d | 2024-11-25 | 2024-12-04 |  |
| 106 | 3.11 | Go-Live for Beta 1 in Perth | milestone, manual | 0d | 2024-12-06 | 2024-12-06 |  |
| 107 | 3.12 | Acceptance Testing | manual | 30d | 2024-12-09 | 2025-01-17 |  |
| 108 | 3.13 | Final Acceptance Testing Completion | milestone, manual | 0d | 2025-01-17 | 2025-01-17 |  |

| ID | WBS | Task | Type | Duration | Start | Finish | Predecessors |
| --- | --- | --- | --- | --- | --- | --- | --- |
| 109 | 4 | **Pilot 2 (Sydney)** |  | 78d? | 2024-11-27 | 2025-03-14 |  |
| 110 | 4.1 | Preliminary Design | manual | 13d | 2024-12-05 | 2024-12-23 | 105 |
| 111 | 4.2 | **Hardware/Software Implementation** |  | 13d | 2024-11-27 | 2024-12-13 |  |
| 112 | 4.2.1 | Procure & Implement Pilot 2 Hardware/Software | manual | 13d | 2024-11-27 | 2024-12-13 |  |
| 113 | 4.3 | **System Testing** |  | 41d? | 2024-12-13 | 2025-02-07 |  |
| 114 | 4.3.1 | Rectify | manual | 29d | 2024-12-09 | 2025-01-16 | 107SS |
| 115 | 4.3.2 | Pilot 2 System Testing | milestone, manual | 0d | 2025-01-22 | 2025-01-22 |  |
| 116 | 4.3.3 | Sys Test | manual | 12d | 2025-01-23 | 2025-02-07 |  |
| 117 | 4.4 | Go Live | manual | 25d | 2025-02-10 | 2025-03-14 |  |
| 118 | 4.5 | SWT | manual | 10d | 2025-02-10 | 2025-02-21 |  |
| 119 | 4.6 | SWT Complete | milestone, manual | 0d | 2025-02-21 | 2025-02-21 |  |
| 120 | 4.7 | Acceptance Testing (AT) | manual | 16d | 2025-02-21 | 2025-03-14 |  |
| 121 | 4.8 | Complete AT | milestone, manual | 0d | 2025-03-14 | 2025-03-14 |  |
| 122 | 5 | **Pilot 3 (Melbourne)** |  | 80d? | 2025-01-27 | 2025-05-16 |  |
| 123 | 5.1 | **Preliminary Design** |  | 35d | 2025-01-27 | 2025-03-14 |  |
| 124 | 5.1.1 | Hardware/Software Implementation | manual | 30d | 2025-01-27 | 2025-03-07 |  |
| 125 | 5.1.2 | Obtain Design Approval &Final Teach Design | manual | 5d | 2025-03-10 | 2025-03-14 |  |
| 126 | 5.2 | **SYS Test** |  | 55d? | 2025-01-27 | 2025-04-11 |  |
| 127 | 5.2.1 | Rectifying and Testing | manual | 32d | 2025-01-30 | 2025-03-14 |  |
| 128 | 5.2.2 | Rectifying and Testing Completeion | milestone, manual | 0d | 2025-03-24 | 2025-03-24 |  |
| 129 | 5.2.3 | Implemeting and Upgrades in Melbourne | manual | 15d | 2025-03-24 | 2025-04-11 |  |
| 130 | 5.3 | **STW** |  | 15d? | 2025-04-14 | 2025-05-02 |  |
| 131 | 5.3.1 | Execute System Testing for Load Sharing | manual | 15d | 2025-04-14 | 2025-05-02 |  |
| 132 | 5.4 | Resolve Testing issues( If any) | milestone, manual | 0d | 2025-05-02 | 2025-05-02 |  |
| 133 | 5.5 | Acceptance Testing (AT) | manual | 11d | 2025-05-02 | 2025-05-16 |  |

| ID | WBS | Task | Type | Duration | Start | Finish | Predecessors |
| --- | --- | --- | --- | --- | --- | --- | --- |
| 134 | 5.6 | **WS5 Live** |  | 25d | 2025-04-14 | 2025-05-16 |  |
| 135 | 5.6.1 | Launch in Melbourne | manual | 25d | 2025-04-14 | 2025-05-16 |  |
| 136 | 5.7 | Full Market Opening | milestone, manual | 0d | 2025-05-16 | 2025-05-16 | 186 |
| 137 | 6 | **Service Desk** |  | 255d? | 2024-05-27 | 2025-05-16 |  |
| 138 | 6.1 | **Service Desk Contract Signature** |  | 120d? | 2024-05-27 | 2024-11-08 |  |
| 139 | 6.1.1 | Provider Identification | manual | 35d | 2024-06-24 | 2024-08-09 |  |
| 140 | 6.1.2 | Procure SDMS Access | manual | 30d | 2024-06-03 | 2024-07-12 |  |
| 141 | 6.1.3 | Develop Knowledge Base | manual | 86d | 2024-07-12 | 2024-11-08 |  |
| 142 | 6.1.4 | Contract Negotiations | manual | 21d | 2024-08-12 | 2024-09-09 |  |
| 143 | 6.1.5 | Finalizing Contract | milestone, manual | 0d | 2024-09-09 | 2024-09-09 |  |
| 144 | 6.2 | System Testing SWT | manual | 15d | 2024-11-04 | 2024-11-22 |  |
| 145 | 6.3 | Acceptance Testing (AT) complete | milestone, manual | 0d | 2024-11-22 | 2024-11-22 |  |
| 146 | 6.4 | WS6 LIVE | manual | 16d | 2024-11-04 | 2024-11-25 |  |
| 147 | 6.5 | Upload Content, Updating and Rectification in SDMS | manual | 125d | 2024-11-25 | 2025-05-16 |  |
| 148 | 6.6 | Delivering SD support service | manual | 125d | 2024-11-25 | 2025-05-16 |  |
| 149 | 7 | **Level 2/3 Support Services** |  | 273d? | 2024-05-01 | 2025-05-16 |  |
| 150 | 7.1 | **WS7 LIVE** |  | 273d? | 2024-05-01 | 2025-05-16 |  |
| 151 | 7.1.1 | **Develop Support Team** |  | 158d? | 2024-05-01 | 2024-12-06 |  |
| 152 | 7.1.1.1 | Enhance Knowledge Base | manual | 158d | 2024-05-01 | 2024-12-06 |  |
| 153 | 7.1.2 | Support service of Level 2/3 | manual | 115d | 2024-12-09 | 2025-05-16 |  |
| 154 | 7.2 | Enhance Knowledge Base | manual | 50d | 2024-07-15 | 2024-09-20 |  |
| 155 | 7.3 | Staff team Traning | manual | 35d | 2024-09-23 | 2024-11-08 |  |
| 156 | 7.4 | Procure Hardware & Software | manual | 20d | 2024-11-11 | 2024-12-06 |  |
| 157 | 7.5 | Finalizing Support Team | milestone, manual | 0d | 2024-12-06 | 2024-12-06 |  |
| 158 | 7.6 | Testing and Validating Knowledge Base | manual | 115d | 2024-12-09 | 2025-05-16 |  |
| 159 | 7.7 | Transition Operation completion | milestone, manual | 0d | 2025-05-16 | 2025-05-16 |  |

| ID | WBS | Task | Type | Duration | Start | Finish | Predecessors |
| --- | --- | --- | --- | --- | --- | --- | --- |
| 160 | 8 | **Datacentres** |  | 235d? | 2024-06-24 | 2025-05-16 |  |
| 161 | 8.1 | **Contract Signature of WS8** |  | 98d? | 2024-06-26 | 2024-11-08 |  |
| 162 | 8.1.1 | Provider Identification & Selection | manual | 33d | 2024-06-26 | 2024-08-09 |  |
| 163 | 8.1.2 | Desining and implementing Plan | manual | 65d | 2024-08-12 | 2024-11-08 |  |
| 164 | 8.2 | Investigation of DC Options | manual | 40d | 2024-07-08 | 2024-08-30 |  |
| 165 | 8.3 | Contract Negotiations | manual | 20d | 2024-09-02 | 2024-09-27 |  |
| 166 | 8.4 | Datacentre systems Maintains and management | manual | 135d | 2024-11-11 | 2025-05-16 |  |
| 167 | 8.5 | Finalizing Contract and Negotitions | milestone, manual | 0d | 2024-09-27 | 2024-09-27 |  |
| 168 | 8.6 | Procure Hardware & Installation | manual | 16d | 2024-09-27 | 2024-10-18 |  |
| 169 | 8.7 | **System Testing (STW)** |  | 140d | 2024-11-04 | 2025-05-16 |  |
| 170 | 8.7.1 | System Testing of Beta 1 | manual | 25d | 2024-11-04 | 2024-12-06 |  |
| 171 | 8.7.2 | Beta 1 STW Complete | milestone, manual | 0d | 2024-12-06 | 2024-12-06 | 106 |
| 172 | 8.7.3 | System Testing of Beta 2 | manual | 10d | 2025-02-03 | 2025-02-14 |  |
| 173 | 8.7.4 | Beta 2 STW Complete | milestone, manual | 0d | 2025-02-21 | 2025-02-21 |  |
| 174 | 8.7.5 | System Testing of Beta 3 | manual | 15d | 2025-04-14 | 2025-05-02 |  |
| 175 | 8.7.6 | Beta 3 STW Complete | milestone, manual | 0d | 2025-05-02 | 2025-05-02 |  |
| 176 | 8.8 | Transition Operation completion | milestone, manual | 0d | 2025-05-16 | 2025-05-16 |  |
| 177 | 9 | **Procurement & Preparation of Media** |  | 273d? | 2024-05-01 | 2025-05-16 |  |
| 178 | 9.1 | **Media Identification & Selection** |  | 271d? | 2024-05-03 | 2025-05-16 |  |
| 179 | 9.1.1 | Existing Media Raationalization | manual | 21d | 2024-05-03 | 2024-05-31 |  |
| 180 | 9.1.2 | Market Identification | manual | 30d | 2024-06-03 | 2024-07-12 |  |
| 181 | 9.1.3 | Media provider interaction | manual | 40d | 2024-07-15 | 2024-09-06 |  |
| 182 | 9.1.4 | Contractual Agreements | milestone, manual | 0d | 2024-09-16 | 2024-09-16 |  |
| 183 | 9.1.5 | Media conversion | manual | 175d | 2024-09-16 | 2025-05-16 |  |
| 184 | 9.2 | Additional Media Requirements | manual | 41d | 2024-05-31 | 2024-07-26 |  |
| 185 | 9.3 | Media conversion | manual | 36d | 2024-07-29 | 2024-09-16 |  |
| 186 | 9.4 | Transition Operation completion | milestone, manual | 0d | 2025-05-16 | 2025-05-16 |  |

| ID | WBS | Task | Type | Duration | Start | Finish | Predecessors |
| --- | --- | --- | --- | --- | --- | --- | --- |
| 187 | 10 | **Training** |  | 235d? | 2024-06-24 | 2025-05-16 |  |
| 188 | 10.1 | Develop Traning Material | manual | 29d | 2024-06-26 | 2024-08-05 |  |
| 189 | 10.2 | Marketing Team Training | manual | 20d | 2024-08-12 | 2024-09-06 |  |
| 190 | 10.3 | Providing Traning and Materials to stakeholders | manual | 175d | 2024-09-16 | 2025-05-16 |  |
| 191 | 10.4 | Create FAQ Page | manual | 180d | 2024-09-09 | 2025-05-16 |  |
| 192 | 10.5 | Transition Operation completion | milestone, manual | 0d | 2025-05-16 | 2025-05-16 |  |
| 193 | 11 | **Marketing** |  | 235d? | 2024-06-24 | 2025-05-16 | 97SS |
| 194 | 11.1 | Marketing Material Development | manual | 56d | 2024-06-24 | 2024-09-09 | 97SS |
| 195 | 11.2 | Engage With Clients | milestone, manual | 0d | 2024-09-09 | 2024-09-09 | 189 |
| 196 | 11.3 | **Stakeholder Engagement** |  | 180d | 2024-09-09 | 2025-05-16 |  |
| 197 | 11.3.1 | Explanation of new products to existing client | manual | 180d | 2024-09-09 | 2025-05-16 |  |
| 198 | 11.3.2 | Explanation of new products to new client | manual | 165d | 2024-09-30 | 2025-05-16 |  |
| 199 | 11.4 | Transition Operation completion | milestone, manual | 0d | 2025-05-16 | 2025-05-16 |  |
| 200 | 12 | **Closure** |  | 20d? | 2025-05-19 | 2025-06-13 |  |
| 201 | 12.1 | **Project Documentation & Reporting** |  | 20d | 2025-05-19 | 2025-06-13 |  |
| 202 | 12.1.1 | Stakeholder Sign-Off | manual | 20d | 2025-05-19 | 2025-06-13 |  |
| 203 | 12.2 | Formal Close | milestone, manual | 0d | 2025-06-13 | 2025-06-13 |  |
